Schedule from a web Gantt chart, 2025-10-27 to 2027-05-31.
Saturdays and Sundays are off

## Schedule

| ID | WBS | Task | Duration | Start | Finish | Complete |
| --- | --- | --- | --- | --- | --- | --- |
| 2 | 1 | **财务核算** | 395d | 2025-10-27 | 2027-04-30 | 10% |
| 3 | 1.1 | **总账接口** | 235d | 2025-10-27 | 2026-09-18 | 52% |
| 4 | 1.1.1 | 接口方案确定及其他准备工作 | 5d | 2025-10-27 | 2025-10-31 | 100% |
| 5 | 1.1.2 | 确认外部系统与本系统档案之间的对照关系，并完成配置 | 5d | 2026-09-07 | 2026-09-11 | 80% |
| 6 | 1.1.3 | 配置单据模板（需要使用辅助、会计科目规则档案在编码字段维护档案类型，修改字段名称） | 5d | 2026-09-07 | 2026-09-11 | 50% |
| 7 | 1.1.4 | 确认科目单据规则，并完成配置 | 5d | 2026-09-07 | 2026-09-11 | 50% |
| 8 | 1.1.5 | 确认业务场景维护，并完成配置 | 5d | 2026-09-07 | 2026-09-11 | 50% |
| 9 | 1.1.6 | 下载数据（自动下载数据或者手动下载数据） | 5d | 2026-09-07 | 2026-09-11 | 90% |
| 10 | 1.1.7 | 生成凭证并核对凭证金额 | 5d | 2026-09-14 | 2026-09-18 |  |
| 11 | 1.1.8 | 联查凭证 | 5d | 2026-09-14 | 2026-09-18 |  |
| 12 | 1.2 | **全面预算** | 44d | 2026-09-01 | 2026-10-30 | 17% |
| 13 | 1.2.1 | 预算执行中预算号，预算调整单，预算执行单的编码规则确认 | 4d | 2026-09-01 | 2026-09-04 | 80% |
| 14 | 1.2.2 | 确认预算号执行权限 | 4d | 2026-09-01 | 2026-09-04 | 80% |
| 15 | 1.2.3 | 确认预算执行的控制规则 | 4d | 2026-09-01 | 2026-09-04 | 80% |
| 16 | 1.2.4 | 基础数据导入 | 4d | 2026-09-01 | 2026-09-04 | 80% |
| 17 | 1.2.5 | 预算填报 | 40d | 2026-09-07 | 2026-10-30 |  |
| 18 | 1.2.6 | 预算指标权限分配 | 5d | 2026-09-07 | 2026-09-11 |  |
| 19 | 1.2.7 | 预算日常调整调剂单据表单以及审批流程的确认 | 7d | 2026-10-08 | 2026-10-16 |  |
| 20 | 1.2.8 | 预算中期调整流程及表单的确认 | 7d | 2026-10-08 | 2026-10-16 |  |
| 21 | 1.3 | **报销管理** | 18d | 2026-09-07 | 2026-09-30 |  |
| 22 | 1.3.1 | 上线前功能测试 | 18d | 2026-09-07 | 2026-09-30 |  |
| 23 | 1.3.2 | 培训资料资料准备 | 1d | 2026-09-28 | 2026-09-28 |  |
| 24 | 1.4 | 应收应付 | 61d | 2026-10-08 | 2026-12-31 |  |
| 25 | 1.5 | 固定资产 | 40d | 2026-09-07 | 2026-10-30 |  |
| 26 | 1.6 | 薪酬管理 | 40d | 2026-09-07 | 2026-10-30 |  |
| 27 | 1.7 | 资金管理 | 17d | 2026-10-08 | 2026-10-30 |  |
| 28 | 1.8 | 成本管理 | 50d | 2027-02-22 | 2027-04-30 |  |

| ID | WBS | Task | Duration | Start | Finish |
| --- | --- | --- | --- | --- | --- |
| 29 | 2 | **人力资源** | 1d | 2026-09-01 | 2026-09-01 |
| 30 | 2.1 | 考勤管理 | 1d | 2026-09-01 | 2026-09-01 |
| 31 | 2.2 | 年度考核 | 1d | 2026-09-01 | 2026-09-01 |
| 32 | 2.3 | 请假管理 | 1d | 2026-09-01 | 2026-09-01 |
| 33 | 3 | **物资管理** | 84d | 2026-09-07 | 2026-12-31 |
| 34 | 3.1 | 需求调研 | 10d | 2026-09-07 | 2026-09-18 |
| 35 | 3.2 | 系统实施 | 30d | 2026-09-21 | 2026-10-30 |
| 36 | 3.3 | 上线试运行 | 44d | 2026-11-02 | 2026-12-31 |
| 37 | 4 | **决策分析** | 71d | 2027-02-22 | 2027-05-31 |
| 38 | 4.1 | 人力主题 | 71d | 2027-02-22 | 2027-05-31 |
| 39 | 4.2 | 财务主题 | 71d | 2027-02-22 | 2027-05-31 |
| 40 | 4.3 | 物资主题 | 71d | 2027-02-22 | 2027-05-31 |
